# Plan Proyecto - SS039 - 2015LA-000019-01 Pruebas Performance Riesgo Liquidez

Schedule from MS Project, 2016-09-27 to 2016-11-02, A marks actual dates.

## Calendars

- Standard: Mon-Fri 08:00-12:00, 13:00-17:00; Sat-Sun off.

## Resources

| Resource |
| --- |
| Av |
| Av-BCR |

## Schedule

| ID | WBS | Task | Type | Duration | Start | Finish | Predecessors | Complete | Baseline start | Baseline finish | Baseline duration | Total slack | Constraint | Resources | Work | Actual work |
| --- | --- | --- | --- | --- | --- | --- | --- | --- | --- | --- | --- | --- | --- | --- | --- | --- |
| 1 | 1 | **Contextualizacion** |  | 4d | 2016-09-27 08:00 A | 2016-10-03 08:00 A |  | 100% | 2016-09-27 08:00 | 2016-10-03 08:00 | 4d |  |  |  | 32h | 32h |
| 2 | 1.1 | Sesiones de contextualización con personal del Banco |  | 1d | 2016-09-27 08:00 A | 2016-09-27 17:00 A |  | 100% | 2016-09-27 08:00 | 2016-09-27 17:00 | 1d |  |  |  | 8h | 8h |
| 3 | 1.2 | Revisión de documentos de requerimientos |  | 2d | 2016-09-28 08:00 A | 2016-09-29 17:00 A | 2 | 100% | 2016-09-28 08:00 | 2016-09-29 17:00 | 2d |  |  | Av | 16h | 16h |
| 4 | 1.3 | Definición de estrategia de pruebas |  | 1d | 2016-09-30 08:00 A | 2016-09-30 17:00 A | 3 | 100% | 2016-09-30 08:00 | 2016-09-30 17:00 | 1d |  |  | Av | 8h | 8h |
| 5 | 1.4 | Entregable 1 - Propuesta estrategia de pruebas.pdf | milestone | 0d | 2016-10-03 08:00 A | 2016-10-03 08:00 A | 4 | 100% | 2016-10-03 08:00 | 2016-10-03 08:00 | 0d |  | must start on 2016-10-03 08:00 | Av |  |  |
| 6 | 2 | **Preparación de las pruebas** |  | 7d | 2016-10-04 08:00 A | 2016-10-13 08:00 A |  | 100% | 2016-10-04 08:00 | 2016-10-07 11:00 | 3.38d |  |  |  | 25.5h | 25.5h |
| 7 | 2.1 | Capacitación a usuarios en el sistema |  | 0.5h | 2016-10-04 08:00 A | 2016-10-04 08:30 A | 5 | 100% | 2016-10-04 08:00 | 2016-10-04 10:00 | 2h |  | start no earlier than 2016-10-04 08:00 | Av | 0.5h | 0.5h |
| 8 | 2.2 | Configuracion de ambiente de desarrollo |  | 3h | 2016-10-04 08:30 A | 2016-10-04 11:30 A | 7 | 100% | 2016-10-04 10:00 | 2016-10-04 14:00 | 3h |  | start no earlier than 2016-10-04 08:00 | Av | 3h | 3h |
| 9 | 2.3 | Creacion de flujos automatizados para monitoreo Web |  | 6d | 2016-10-04 11:30 A | 2016-10-12 11:30 A | 8 | 100% | 2016-10-04 14:00 | 2016-10-06 14:00 | 2d |  |  | Av | 16h | 16h |
| 10 | 2.4 | Creacion de guion de ejecucion de ciclos de prueba |  | 6h | 2016-10-06 11:30 A | 2016-10-07 09:30 A | 9 | 100% | 2016-10-06 14:00 | 2016-10-07 11:00 | 6h |  |  | Av | 6h | 6h |
| 11 | 2.5 | Entregable 2 - Scripts monitoreo web.rar | milestone | 0d | 2016-10-13 08:00 A | 2016-10-13 08:00 A | 10 | 100% | 2016-10-07 11:00 | 2016-10-07 11:00 | 0d |  | must start on 2016-10-13 08:00 | Av |  |  |
| 12 | 3 | **Ejecución Ciclo Pruebas** |  | 4d | 2016-10-18 08:00 A | 2016-10-21 17:00 A |  | 100% | 2016-10-10 08:00 | 2016-10-11 12:00 | 1.5d |  |  |  | 16h | 16h |
| 13 | 3.1 | **Preparación de la ejecucion** |  | 0.12d | 2016-10-18 08:00 A | 2016-10-18 09:00 A |  | 100% | 2016-10-10 08:00 | 2016-10-10 09:00 | 0.12d |  |  |  | 1h | 1h |
| 14 | 3.1.1 | Validacion de ambiente de pruebas |  | 1h | 2016-10-18 08:00 A | 2016-10-18 09:00 A | 11 | 100% | 2016-10-10 08:00 | 2016-10-10 09:00 | 1h |  | start no earlier than 2016-10-18 08:00 | Av | 1h | 1h |
| 15 | 3.2 | Ejecucion Escenario 2 - Linea base navegacion web |  | 2h | 2016-10-18 14:00 A | 2016-10-18 16:00 A | 14 | 100% | 2016-10-10 14:00 | 2016-10-10 16:00 | 2h |  |  | Av | 2h | 2h |
| 16 | 3.3 | Ejecucion Escenario 1 - Linea base generacion reportes |  | 3d | 2016-10-19 08:00 A | 2016-10-21 17:00 A | 14 | 100% | 2016-10-10 09:00 | 2016-10-10 14:00 | 4h |  | must start on 2016-10-19 08:00 | Av | 9h | 9h |
| 17 | 3.4 | Ejecucion Escenario 3 - Cola de generacion de reportes y monitoreo navegacion web |  | 8h | 2016-10-21 08:00 A | 2016-10-21 17:00 A |  | 100% | 2016-10-11 08:00 | 2016-10-11 12:00 | 4h |  | start no earlier than 2016-10-21 08:00 | Av [50%] | 4h | 4h |
| 18 | 4 | **Analisis de resultados** |  | 5.5d | 2016-10-26 08:00 | 2016-11-02 12:00 |  |  | 2016-10-12 08:00 | 2016-10-19 10:00 | 5.25d | 0d |  |  | 42h |  |
| 19 | 4.1 | Procesamiento de bitacoras de ejecucion |  | 6h | 2016-10-26 08:00 | 2016-10-26 15:00 | 17 |  | 2016-10-12 08:00 | 2016-10-12 15:00 | 6h | 0.25d | start no earlier than 2016-10-26 08:00 | Av | 6h |  |
| 20 | 4.2 | Analisis de bitacoras procesadas |  | 12h | 2016-10-27 08:00 | 2016-10-28 12:00 | 19 |  | 2016-10-12 15:00 | 2016-10-14 10:00 | 12h | 0d | start no earlier than 2016-10-27 08:00 | Av | 12h |  |
| 21 | 4.3 | Generacion de documento de resultados |  | 16h | 2016-10-28 13:00 | 2016-11-01 12:00 | 20 |  | 2016-10-14 10:00 | 2016-10-18 10:00 | 16h | 0d |  | Av | 16h |  |
| 22 | 4.4 | Generacion de documento de presentacion de resultados (ppt) |  | 6h | 2016-11-01 13:00 | 2016-11-02 10:00 | 21 |  | 2016-10-18 10:00 | 2016-10-18 17:00 | 6h | 0d |  | Av | 6h |  |
| 23 | 4.5 | Sesion de Trabajo: Revision de resultados Ciclo Pruebas de Rendimiento |  | 2h | 2016-11-02 10:00 | 2016-11-02 12:00 | 22 |  | 2016-10-19 08:00 | 2016-10-19 10:00 | 2h | 0d | start no earlier than 2016-10-28 08:00 | Av-BCR | 2h |  |
| 24 | 4.6 | Entregable 3 - Resultados Ciclo de Pruebas Rendimiento.pdf | milestone | 0d | 2016-11-02 12:00 | 2016-11-02 12:00 | 23 |  | 2016-10-19 10:00 | 2016-10-19 10:00 | 0d | 0d |  | Av |  |  |
| 25 | 4.7 | Entregable 4 - Resultados Ciclo de Pruebas Rendimiento.ppt | milestone | 0d | 2016-11-02 12:00 | 2016-11-02 12:00 | 23 |  | 2016-10-19 10:00 | 2016-10-19 10:00 | 0d | 0d |  | Av |  |  |
