# Plan_Proyecto SS-003-LA 2013000036-01_V9.1

Schedule from MS Project, 2015-03-27 to 2015-09-24, A marks actual dates.

## Calendars

- Standard: Mon-Fri 08:00-12:00, 13:00-17:00; Sat-Sun off. Exceptions (off unless hours are given): 2015-04-02 to 2015-04-03 (Semana Santa), 2015-05-01 (Dia del Trabajador), 2015-05-23 08:00-12:00, 13:00-18:00 (Ejecucion 1), 2015-08-22 08:00-12:00, 13:00-18:00 (Ejecucion 2).

## Resources

| Resource |
| --- |
| QA1 |
| QA2 |
| QAI |
| QA3 |
| QALead |
| Nube |
| QA! |

## Schedule

| ID | WBS | Task | Type | Duration | Start | Finish | Predecessors | Complete | Constraint | Resources | Work | Actual work |
| --- | --- | --- | --- | --- | --- | --- | --- | --- | --- | --- | --- | --- |
| 1 | 1 | **Preparación de ambientes de pruebas** |  | 18d | 2015-03-27 08:00 A | 2015-04-23 17:00 A |  | 100% |  |  | 280h | 280h |
| 2 | 1.1 | Capacitación a usuarios en el sistema |  | 1d | 2015-03-27 08:00 A | 2015-03-27 17:00 A |  | 100% |  | QA1; QA2 | 16h | 16h |
| 3 | 1.2 | Configuración de ambientes y análisis de flujos a automatizar |  | 1d | 2015-03-30 08:00 A | 2015-03-30 17:00 A | 2 | 100% |  | QA1; QA2 | 16h | 16h |
| 4 | 1.3 | Revisión y configuración de datos de prueba |  | 2d | 2015-03-31 08:00 A | 2015-04-01 17:00 A | 3 | 100% |  | QA1; QA2 | 32h | 32h |
| 5 | 1.4 | Creación de scripts para flujos de consultas |  | 11d | 2015-04-06 08:00 A | 2015-04-20 17:00 A | 4 | 100% |  | QA1; QA2 | 176h | 176h |
| 6 | 1.5 | Pruebas de scripts y simulación de carga |  | 1d | 2015-04-21 08:00 A | 2015-04-21 17:00 A | 5 | 100% |  | QA1; QA2 | 16h | 16h |
| 7 | 1.6 | Creación de VM root en La Nube |  | 1d | 2015-04-22 08:00 A | 2015-04-22 17:00 A | 6 | 100% |  | QA1 | 8h | 8h |
| 8 | 1.7 | Configuración de ambiente back-end para ciclos de prueba |  | 1d | 2015-04-23 08:00 A | 2015-04-23 17:00 A | 7 | 100% |  | QA1; QA2 | 16h | 16h |
| 9 | 1.8 | Entregable: Scripts ejecución de pruebas.zip | milestone | 0d | 2015-04-23 17:00 A | 2015-04-23 17:00 A | 8 | 100% |  |  |  |  |
| 11 | 2 | **Ciclo I: Carga al 75% del máximo estimado** |  | 8.38d | 2015-05-23 08:00 A | 2015-06-03 10:00 A | 1 | 100% |  |  | 102h | 102h |
| 12 | 2.1 | Inicialización y Configuración del ambiente en la Nube |  | 4h | 2015-05-23 08:00 A | 2015-05-23 12:00 A | 9 | 100% | must start on 2015-05-23 08:00 | QA1; QA2 | 8h | 8h |
| 13 | 2.2 | Ejecución del ciclo de carga |  | 4h | 2015-05-23 13:00 A | 2015-05-23 17:00 A | 12 | 100% |  | QA1; QA2; QA3; QALead | 16h | 16h |
| 14 | 2.3 | Recolección de datos de Carga |  | 1h | 2015-05-23 17:00 A | 2015-05-23 18:00 A | 13 | 100% |  | QA1; QA2 | 2h | 2h |
| 15 | 2.4 | Procesamiento de resultados de carga y generación de reportes |  | 3d | 2015-05-25 08:00 A | 2015-05-27 17:00 A | 14 | 100% |  | QA1; QA2 | 48h | 48h |
| 16 | 2.5 | Creación del documento final de resultados |  | 3d | 2015-05-28 08:00 A | 2015-06-01 17:00 A | 15 | 100% |  | QA1 | 24h | 24h |
| 17 | 2.6 | Presentación de resultados |  | 2h | 2015-06-03 08:00 A | 2015-06-03 10:00 A | 16 | 100% | start no earlier than 2015-06-03 08:00 | QA1; QALead | 4h | 4h |
| 18 | 2.7 | Entregable: Resultado Pruebas Ciclo I 75% carga.doc | milestone | 0d | 2015-06-03 10:00 A | 2015-06-03 10:00 A | 17 | 100% |  |  |  |  |
| 19 | 2.8 | Entregable: Presentacion resultados Ciclo I 75% carga.ppt | milestone | 0d | 2015-06-03 10:00 A | 2015-06-03 10:00 A | 17 | 100% |  |  |  |  |
| 21 | 3 | Sesion# 1: Transferencia de conocimiento a personal de QA del Banco BCR |  | 4h | 2015-06-10 08:00 A | 2015-06-10 12:00 A | 11 | 100% | start no earlier than 2015-06-10 08:00 | QA1 | 4h | 4h |
| 23 | 4 | **Ajustes Previos al Ciclo II** |  | 20d | 2015-07-21 08:00 A | 2015-08-17 17:00 A |  | 100% |  |  | 92h | 92h |
| 24 | 4.1 | Ejecución / Validación de flujos (Selenium y Jmeter) |  | 1d | 2015-07-21 08:00 A | 2015-07-21 17:00 A |  | 100% | start no earlier than 2015-07-21 08:00 | QA1 | 8h | 8h |
| 25 | 4.2 | Correciones implementación por nueva versión del sitio |  | 1d | 2015-07-22 08:00 A | 2015-07-22 17:00 A | 24 | 100% |  | QA1 | 8h | 8h |
| 26 | 4.3 | Creacion de nuevas versiones de flujos para usar usuario regular - 4 flujos |  | 4d | 2015-07-23 08:00 A | 2015-07-28 17:00 A | 25 | 100% |  | QA1 | 32h | 32h |
| 27 | 4.4 | Modificación de scripts para estrategia "1 login - 3 transacciones - logout" |  | 1d | 2015-07-29 08:00 A | 2015-07-29 17:00 A | 26 | 100% |  | QA1 | 8h | 8h |
| 28 | 4.5 | Ajustes configuración de carga para estrategia "1 login - 3 transacciones - logout" |  | 0.5d | 2015-07-30 08:00 A | 2015-07-30 12:00 A | 27 | 100% |  | QA1 | 4h | 4h |
| 29 | 4.6 | Pruebas generales de ejecución de scripts |  | 2d | 2015-07-30 13:00 A | 2015-08-03 12:00 A | 28 | 100% |  | QA1 | 16h | 16h |
| 30 | 4.7 | Correcciones y Pruebas por modificacion en pagina de llegada - Usuario Regular |  | 2d | 2015-08-14 08:00 A | 2015-08-17 17:00 A | 29 | 100% | start no earlier than 2015-08-14 08:00 | QA1 | 16h | 16h |

| ID | WBS | Task | Type | Duration | Start | Finish | Predecessors | Complete | Constraint | Resources | Work | Actual work |
| --- | --- | --- | --- | --- | --- | --- | --- | --- | --- | --- | --- | --- |
| 32 | 5 | **Ciclo II: Nueva Carga Estimada y Distribución 90Reg-10Conv** |  | 21.38d | 2015-08-22 08:00 A | 2015-09-21 10:00 A | 23, 11 | 100% |  |  | 230h | 230h |
| 33 | 5.1 | Inicialización y Configuración del ambiente en la Nube |  | 4h | 2015-08-22 08:00 A | 2015-08-22 12:00 A |  | 100% | start no earlier than 2015-08-22 08:00 | QA1; QA2 | 8h | 8h |
| 34 | 5.2 | Ejecución del ciclo de carga |  | 4h | 2015-08-22 13:00 A | 2015-08-22 17:00 A | 33 | 100% |  | QA1; QA2; QA3; QALead | 16h | 16h |
| 35 | 5.3 | Recolección de datos de Carga |  | 1h | 2015-08-22 17:00 A | 2015-08-22 18:00 A | 34 | 100% |  | QA1; QA2 | 2h | 2h |
| 36 | 5.4 | Procesamiento de resultados de carga y generación de reportes |  | 10d | 2015-08-24 08:00 A | 2015-09-04 17:00 A | 35 | 100% |  | QA1; QA2 | 160h | 160h |
| 37 | 5.5 | Creación del documento final de resultados |  | 5d | 2015-09-07 08:00 A | 2015-09-18 17:00 A | 36 | 100% | finish no earlier than 2015-09-18 17:00 | QA1 | 40h | 40h |
| 38 | 5.6 | Presentación de resultados |  | 2h | 2015-09-21 08:00 A | 2015-09-21 10:00 A | 37 | 100% |  | QA1; QALead | 4h | 4h |
| 39 | 5.7 | Entregable: Resultado Pruebas Ciclo II 100% carga.doc | milestone | 0d | 2015-09-21 10:00 A | 2015-09-21 10:00 A | 38 | 100% |  |  |  |  |
| 40 | 5.8 | Entregable: Presentacion resultados Ciclo II 100% carga.ppt | milestone | 0d | 2015-09-21 10:00 A | 2015-09-21 10:00 A | 38 | 100% |  |  |  |  |
| 41 | 5.9 | Entregable: Scripts finales ejecución de pruebas.zip | milestone | 0d | 2015-09-21 10:00 A | 2015-09-21 10:00 A | 38 | 100% |  |  |  |  |
| 42 | 5.10 | Entregable: Documentos Finales.zip | milestone | 0d | 2015-09-21 10:00 A | 2015-09-21 10:00 A | 38 | 100% |  |  |  |  |
| 44 | 6 | Sesion#2: Transferencia de conocimiento al personal de QA del Banco BCR |  | 4h | 2015-09-24 08:00 A | 2015-09-24 12:00 A | 32 | 100% | start no earlier than 2015-09-24 08:00 | QA1 | 4h | 4h |
