# Gobierno Digital - Plan de pruebas de rendimiento

Schedule from MS Project, 2017-02-14 to 2017-03-02.
Microsoft

## Calendars

- Standard: Mon-Fri 08:00-12:00, 13:00-17:00; Sat-Sun off.

## Resources

| Resource |
| --- |
| SQA |
| BCR |
| Lead |

## Schedule

| ID | WBS | Task | Type | Duration | Start | Finish | Predecessors | Total slack | Resources | Work |
| --- | --- | --- | --- | --- | --- | --- | --- | --- | --- | --- |
| 1 | 1 | **Gobierno Digital - Plan de pruebas de rendimiento** |  | 12.46d? | 2017-02-14 | 2017-03-02 |  | 0d |  | 105h |
| 2 | 1.1 | Reunion inicial |  | 0.17d? | 2017-02-14 | 2017-02-14 |  | 0d | SQA; Lead; BCR | 4h |
| 3 | 1.2 | **Primera Fase de pruebas** |  | 12.29d? | 2017-02-14 | 2017-03-02 |  | 0d |  | 101h |
| 4 | 1.2.1 | Pruebas de concepto |  | 1d? | 2017-02-14 | 2017-02-15 | 2 | 0d | SQA | 8h |
| 5 | 1.2.2 | Creacion de scripts |  | 2d? | 2017-02-15 | 2017-02-17 | 4 | 0d | SQA | 16h |
| 6 | 1.2.3 | Ejecucion de scripts |  | 1.5d? | 2017-02-17 | 2017-02-20 | 5 | 0d | SQA | 12h |
| 7 | 1.2.4 | Recopilacion de resultados servidores | milestone | 0d? | 2017-02-20 | 2017-02-20 | 6 | 7.79d | BCR |  |
| 8 | 1.2.5 | Recopilacion de resultados |  | 0.25d? | 2017-02-20 | 2017-02-20 | 6 | 0d | SQA | 2h |
| 9 | 1.2.6 | **Segunda Fase de pruebas** |  | 7.54d? | 2017-02-20 | 2017-03-02 |  | 0d |  | 63h |
| 10 | 1.2.6.1 | Verificacion funcional de scripts |  | 0.12d? | 2017-02-20 | 2017-02-21 | 8 | 0d | SQA | 1h |
| 11 | 1.2.6.2 | Ajuste de scripts (Si es necesario) |  | 0.5d? | 2017-02-21 | 2017-02-21 | 10 | 0d | SQA | 4h |
| 12 | 1.2.6.3 | Ejecucion de scripts |  | 1.5d? | 2017-02-21 | 2017-02-23 | 11 | 0d | SQA | 12h |
| 13 | 1.2.6.4 | Recopilacion de resultados servidores | milestone | 0d? | 2017-02-23 | 2017-02-23 | 12 | 5.42d | BCR |  |
| 14 | 1.2.6.5 | Recopilacion de resultados |  | 0.25d? | 2017-02-23 | 2017-02-23 | 12 | 0d | SQA | 2h |
| 15 | 1.2.6.6 | Analisis de resultados |  | 2d? | 2017-02-23 | 2017-02-27 | 14 | 0d | SQA | 16h |
| 16 | 1.2.6.7 | Creacion de documento de resultados |  | 2d? | 2017-02-27 | 2017-03-01 | 15 | 0d | SQA | 16h |
| 17 | 1.2.6.8 | Creacion de presentacion |  | 1d? | 2017-03-01 | 2017-03-02 | 16 | 0d | SQA | 8h |
| 18 | 1.2.6.9 | Entregable 1: Scripts de prueba | milestone | 0d? | 2017-03-02 | 2017-03-02 | 17 | 0.17d | SQA |  |
| 19 | 1.2.6.10 | Entregable 2: Documento de resultados | milestone | 0d? | 2017-03-02 | 2017-03-02 | 17 | 0.17d | SQA |  |
| 20 | 1.2.6.11 | Entregable 3: Presentacion de resultados | milestone | 0d? | 2017-03-02 | 2017-03-02 | 17 | 0.17d | SQA |  |
| 21 | 1.2.6.12 | Presentacion de resultados |  | 0.17d? | 2017-03-02 | 2017-03-02 | 17 | 0d | SQA; Lead; BCR | 4h |
