# BCR Tucan - plan

Schedule from MS Project, 2017-02-06 to 2017-02-28.
Microsoft

## Calendars

- Standard: Mon-Fri 08:00-12:00, 13:00-17:00; Sat-Sun off.

## Resources

| Resource |
| --- |
| QA-Alejandro |
| Sofia |
| QAM Sofia |
| QA Yoel |
| QA Vitaly |
| QA |
| SQA |
| Lead |

## Schedule

| ID | WBS | Task | Type | Duration | Start | Finish | Predecessors | Total slack | Constraint | Resources | Work |
| --- | --- | --- | --- | --- | --- | --- | --- | --- | --- | --- | --- |
| 1 | 1 | **Plan de trabajo - BCR Tucán** |  | 16.69d? | 2017-02-06 | 2017-02-28 |  | 0d |  |  | 117h |
| 2 | 1.1 | **Primer ciclo** |  | 10.19d? | 2017-02-06 | 2017-02-20 |  | 0d |  |  | 70h |
| 3 | 1.1.1 | Reunión inicial |  | 0.19d | 2017-02-06 | 2017-02-06 |  | 0d | start no earlier than 2017-02-06 | SQA; Lead | 3h |
| 4 | 1.1.2 | Pruebas de concepto |  | 1d | 2017-02-06 | 2017-02-07 | 3 | 0d |  | SQA | 8h |
| 5 | 1.1.3 | Creación de Scripts |  | 6d? | 2017-02-07 | 2017-02-15 | 4 | 0d |  | SQA | 48h |
| 6 | 1.1.4 | Verificación de funcionalidad de Scripts |  | 1d? | 2017-02-15 | 2017-02-16 | 5 | 0d |  | SQA [12.5%] | 1h |
| 7 | 1.1.5 | Ejecución de scripts |  | 1d? | 2017-02-16 | 2017-02-17 | 6 | 0d |  | SQA | 8h |
| 8 | 1.1.6 | Recoleccion de resultados |  | 1d? | 2017-02-17 | 2017-02-20 | 7 | 6.5d |  | SQA [25%] | 2h |
| 9 | 1.1.7 | Entregable 1: Scripts de carga | milestone | 0d? | 2017-02-08 | 2017-02-08 |  | 14.69d |  | SQA |  |
| 10 | 1.2 | **Segundo ciclo** |  | 14.69d? | 2017-02-08 | 2017-02-28 |  | 0d |  |  | 47h |
| 11 | 1.2.1 | Verificación de funcionalidad de Scripts |  | 1d? | 2017-02-17 | 2017-02-20 | 7 | 0d |  | SQA [12.5%] | 1h |
| 12 | 1.2.2 | Ajuste de scripts (si es necesario) |  | 1d? | 2017-02-20 | 2017-02-21 | 11 | 0d |  | SQA | 8h |
| 13 | 1.2.3 | Ejecución de scripts |  | 1d? | 2017-02-21 | 2017-02-22 | 12 | 0d |  | SQA | 8h |
| 14 | 1.2.4 | Recoleccion de resultados |  | 1d? | 2017-02-22 | 2017-02-23 | 13 | 0d |  | SQA [25%] | 2h |
| 15 | 1.2.5 | Analisis de resultados |  | 1.5d? | 2017-02-23 | 2017-02-24 | 14 | 0d |  | SQA | 12h |
| 16 | 1.2.6 | Creación informe de resultados |  | 2d? | 2017-02-24 | 2017-02-28 | 15 | 0d |  | SQA | 16h |
| 17 | 1.2.7 | Entregable 2: Scripts de carga actualizados | milestone | 0d? | 2017-02-08 | 2017-02-08 |  | 14.69d |  | SQA |  |
| 18 | 1.2.8 | Entregable 3: Informe de resultados | milestone | 0d? | 2017-02-08 | 2017-02-08 |  | 14.69d |  | SQA |  |
