# Concept tests plan

Schedule from MS Project, 2017-05-04 to 2017-05-11.
Microsoft

## Calendars

- Standard: Mon-Fri 08:00-12:00, 13:00-17:00; Sat-Sun off.

## Resources

| Resource |
| --- |
| Av |

## Schedule

| ID | WBS | Task | Duration | Start | Finish | Predecessors | Total slack | Resources | Work |
| --- | --- | --- | --- | --- | --- | --- | --- | --- | --- |
| 1 | 1 | **Concept test plan - Illumina** | 5d | 2017-05-04 08:00 | 2017-05-11 08:02 |  | 0d |  | 40h |
| 2 | 1.1 | **Test preparation** | 1.63d | 2017-05-04 08:00 | 2017-05-05 14:02 |  | 0d |  | 13h |
| 3 | 1.1.1 | Test environment configuration | 0.13d | 2017-05-04 08:00 | 2017-05-04 09:02 |  | 0d | Av | 1h |
| 4 | 1.1.2 | Load Script creation | 1.5d | 2017-05-04 09:02 | 2017-05-05 14:02 | 3 | 0d | Av | 12h |
| 5 | 1.2 | **Test execution** | 0.88d | 2017-05-05 14:02 | 2017-05-08 13:02 |  | 0d |  | 7h |
| 6 | 1.2.1 | Test configuration set up | 0.12d | 2017-05-05 14:02 | 2017-05-05 15:02 | 4 | 0d | Av | 1h |
| 7 | 1.2.2 | Execution Scenarie 1 - Import and Delete Run | 0.38d | 2017-05-05 15:02 | 2017-05-08 09:02 | 6 | 0d | Av | 3h |
| 8 | 1.2.3 | Execution Scenarie 2 - Create and Delete Project | 0.38d | 2017-05-08 09:02 | 2017-05-08 13:02 | 7 | 0d | Av | 3h |
| 9 | 1.3 | **Results analisis** | 2.5d | 2017-05-08 13:02 | 2017-05-11 08:02 |  | 0d |  | 20h |
| 10 | 1.3.1 | Logs processing (Tables/Graphs generation) | 0.5d | 2017-05-08 13:02 | 2017-05-09 08:02 | 8 | 0d | Av | 4h |
| 11 | 1.3.2 | Logs Analisis | 1.5d | 2017-05-09 08:02 | 2017-05-10 13:02 | 10 | 0d | Av | 12h |
| 12 | 1.3.3 | Creation of Results document | 0.5d | 2017-05-10 13:02 | 2017-05-11 08:02 | 11 | 0d | Av | 4h |
